# prj_flowers_angel_plan

Schedule from MS Project, 2018-01-22 to 2018-04-05, A marks actual dates.

## Calendars

- Calender of prj_flowers_angel: Mon-Fri 08:00-12:00, 13:00-17:00; Sat-Sun off. Exceptions (off unless hours are given): 2018-02-12 to 2018-02-21 (nghỉ lễ tết âm).

## Resources

| Resource |
| --- |
| Mark Zuckerberg |
| Tom Thomas |
| Đỗ Văn Tú |
| Vũ Duy Đạt |
| Phạm Minh Hoàng |
| Nguyễn Thị Liên |
| Nguyễn Thu Trang |
| Đỗ Thu Hà |
| Nguyễn Thị Minh Hằng |
| Hoàng Thị Thu |
| Đỗ Mai Linh |

## Schedule

| ID | WBS | Task | Duration | Start | Finish | Predecessors | Complete | Remaining | Total slack | Resources | Work | Actual work |
| --- | --- | --- | --- | --- | --- | --- | --- | --- | --- | --- | --- | --- |
| 1 | 1 | **Detail_plan_prj_flowers_angel** | 46d | 2018-01-22 08:00 A | 2018-04-05 17:00 |  | 10% | 41.5d |  |  | 688h | 36h |
| 2 | 1.1 | **Lập kế hoạch dự án** | 3d | 2018-01-22 08:00 A | 2018-01-24 17:00 A |  | 100% |  |  |  | 24h | 24h |
| 3 | 1.1.1 | Ước tính nhân lực chi phí | 4h | 2018-01-22 08:00 A | 2018-01-22 12:00 A |  | 100% |  |  | Mark Zuckerberg | 4h | 4h |
| 4 | 1.1.2 | Xác định giải pháp kỹ thuật | 4h | 2018-01-22 13:00 A | 2018-01-22 17:00 A | 3 | 100% |  |  | Mark Zuckerberg | 4h | 4h |
| 5 | 1.1.3 | Xây dựng kế hoạch tiến độ | 4h | 2018-01-23 08:00 A | 2018-01-23 12:00 A | 4 | 100% |  |  | Mark Zuckerberg | 4h | 4h |
| 6 | 1.1.4 | Xác định rủi ro | 4h | 2018-01-23 13:00 A | 2018-01-23 17:00 A | 5 | 100% |  |  | Mark Zuckerberg | 4h | 4h |
| 7 | 1.1.5 | Viết kế hoạch tổng hợp | 4h | 2018-01-24 08:00 A | 2018-01-24 12:00 A | 6 | 100% |  |  | Mark Zuckerberg | 4h | 4h |
| 8 | 1.1.6 | Khảo sát yêu cầu chi tiết | 4h | 2018-01-24 13:00 A | 2018-01-24 17:00 A | 7 | 100% |  |  | Mark Zuckerberg | 4h | 4h |
| 9 | 1.2 | **Khảo sát yêu cầu thực tế** | 6d | 2018-01-25 08:00 A | 2018-02-01 17:00 | 2 | 25% | 4.5d | 0d |  | 48h | 12h |
| 10 | 1.2.1 | Tham khảo các trang web bán hoa trên thị trường | 4h | 2018-01-25 08:00 A | 2018-01-25 12:00 A | 8 | 100% |  |  | Tom Thomas | 4h | 4h |
| 11 | 1.2.2 | Tìm hiểu yêu cầu khách hàng | 8h | 2018-01-25 13:00 A | 2018-01-26 12:00 A | 10 | 100% |  |  | Tom Thomas | 8h | 8h |
| 12 | 1.2.3 | Viết tài liệu URD | 2d | 2018-01-26 13:00 | 2018-01-30 12:00 | 11 |  |  | 0d | Tom Thomas | 16h |  |
| 13 | 1.2.4 | Viết tài liệu SRS | 2d | 2018-01-30 13:00 | 2018-02-01 12:00 | 12 |  |  | 0d | Tom Thomas | 16h |  |
| 14 | 1.2.5 | Review và lấy chữ ký | 4h | 2018-02-01 13:00 | 2018-02-01 17:00 | 11, 13 |  |  | 0d | Tom Thomas | 4h |  |
| 15 | 1.3 | **Thiết kế hệ thống** | 2d | 2018-02-02 08:00 | 2018-02-05 17:00 | 9 |  |  | 0d |  | 16h |  |
| 16 | 1.3.1 | Lựa chọn công nghệ | 8h | 2018-02-02 08:00 | 2018-02-02 17:00 | 14 |  |  | 0d | Tom Thomas | 8h |  |
| 17 | 1.3.2 | Thiết kế tổng thể hệ thống | 8h | 2018-02-05 08:00 | 2018-02-05 17:00 | 16 |  |  | 0d | Tom Thomas | 8h |  |
| 18 | 1.4 | **Thiết kế chi tiết** | 3d | 2018-02-06 08:00 | 2018-02-08 17:00 | 15 |  |  | 0d |  | 24h |  |
| 19 | 1.4.1 | Thiết kế giao diện/giao tiếp giữa các module | 1.5d | 2018-02-06 08:00 | 2018-02-07 12:00 | 17 |  |  | 0d | Tom Thomas | 12h |  |
| 20 | 1.4.2 | Thiết kế giao diện/giao tiếp với các hệ thống ngoài | 1.5d | 2018-02-07 13:00 | 2018-02-08 17:00 | 19 |  |  | 0d | Tom Thomas | 12h |  |
| 21 | 1.5 | **Phát triển hệ thống** | 21d | 2018-02-09 08:00 | 2018-03-21 17:00 | 18 |  |  | 0d |  | 488h |  |
| 22 | 1.5.1 | **Phát triển** | 10d | 2018-02-09 08:00 | 2018-03-06 17:00 |  |  |  | 0d |  | 240h |  |
| 23 | 1.5.1.1 | **Client** | 5.5d | 2018-02-09 08:00 | 2018-02-28 12:00 |  |  |  | 0d |  | 132h |  |
| 24 | 1.5.1.1.1 | Code chức năng Hiển thị sản phẩm | 8h | 2018-02-09 08:00 | 2018-02-09 17:00 | 20 |  |  | 0d | Đỗ Văn Tú; Phạm Minh Hoàng; Vũ Duy Đạt | 24h |  |
| 25 | 1.5.1.1.2 | Code chức năng Tìm kiếm sản phẩm | 8h | 2018-02-22 08:00 | 2018-02-22 17:00 | 24 |  |  | 0d | Đỗ Văn Tú; Phạm Minh Hoàng; Vũ Duy Đạt | 24h |  |
| 26 | 1.5.1.1.3 | Code chức năng Đặt hàng | 8h | 2018-02-23 08:00 | 2018-02-23 17:00 | 25 |  |  | 0d | Đỗ Văn Tú; Phạm Minh Hoàng; Vũ Duy Đạt | 24h |  |
| 27 | 1.5.1.1.4 | Code chức năng Phân trang danh sách sản phẩm | 4h | 2018-02-26 08:00 | 2018-02-26 12:00 | 26 |  |  | 0d | Đỗ Văn Tú; Phạm Minh Hoàng; Vũ Duy Đạt | 12h |  |
| 28 | 1.5.1.1.5 | Code chức năng Thêm sản phẩm vào giỏ hàng | 8h | 2018-02-26 13:00 | 2018-02-27 12:00 | 27 |  |  | 0d | Đỗ Văn Tú; Phạm Minh Hoàng; Vũ Duy Đạt | 24h |  |
| 29 | 1.5.1.1.6 | Code chức năng đăng nhập | 4h | 2018-02-27 13:00 | 2018-02-27 17:00 | 28 |  |  | 0d | Đỗ Văn Tú; Phạm Minh Hoàng; Vũ Duy Đạt | 12h |  |
| 30 | 1.5.1.1.7 | Code chức năng đăng kí tài khoản | 4h | 2018-02-28 08:00 | 2018-02-28 12:00 | 29 |  |  | 0d | Đỗ Văn Tú; Phạm Minh Hoàng; Vũ Duy Đạt | 12h |  |

| ID | WBS | Task | Duration | Start | Finish | Predecessors | Total slack | Resources | Work |
| --- | --- | --- | --- | --- | --- | --- | --- | --- | --- |
| 31 | 1.5.1.2 | **Admin** | 4.5d | 2018-02-28 13:00 | 2018-03-06 17:00 | 23 | 0d |  | 108h |
| 32 | 1.5.1.2.1 | Code chức năng Quản lý đơn đặt hàng | 8h | 2018-02-28 13:00 | 2018-03-01 12:00 | 30 | 0d | Đỗ Văn Tú; Phạm Minh Hoàng; Vũ Duy Đạt | 24h |
| 33 | 1.5.1.2.2 | Code chức năng Quản lý danh mục hoa | 8h | 2018-03-01 13:00 | 2018-03-02 12:00 | 32 | 0d | Đỗ Văn Tú; Phạm Minh Hoàng; Vũ Duy Đạt | 24h |
| 34 | 1.5.1.2.3 | Code chức năng Quản lý hoa | 8h | 2018-03-02 13:00 | 2018-03-05 12:00 | 33 | 0d | Đỗ Văn Tú; Phạm Minh Hoàng; Vũ Duy Đạt | 24h |
| 35 | 1.5.1.2.4 | Code chức năng đăng nhập | 4h | 2018-03-05 13:00 | 2018-03-05 17:00 | 34 | 0d | Đỗ Văn Tú; Phạm Minh Hoàng; Vũ Duy Đạt | 12h |
| 36 | 1.5.1.2.5 | Code chức năng Quản lý tài khoản | 8h | 2018-03-06 08:00 | 2018-03-06 17:00 | 35 | 0d | Đỗ Văn Tú; Phạm Minh Hoàng; Vũ Duy Đạt | 24h |
| 37 | 1.5.2 | **Kiểm thử** | 11d | 2018-03-07 08:00 | 2018-03-21 17:00 | 22 | 0d |  | 248h |
| 38 | 1.5.2.1 | Lập test plan | 8h | 2018-03-07 08:00 | 2018-03-07 17:00 | 20 | 0d | Nguyễn Thị Liên | 8h |
| 39 | 1.5.2.2 | Viết test case | 5d | 2018-03-08 08:00 | 2018-03-14 17:00 | 38 | 0d | Nguyễn Thị Liên; Nguyễn Thu Trang; Đỗ Thu Hà | 120h |
| 40 | 1.5.2.3 | **Client** | 2.75d | 2018-03-15 08:00 | 2018-03-19 15:00 | 39 | 0d |  | 66h |
| 41 | 1.5.2.3.1 | Test chức năng hiển thị sản phẩm | 4h | 2018-03-15 08:00 | 2018-03-15 12:00 | 24, 39 | 0d | Nguyễn Thị Liên; Nguyễn Thu Trang; Đỗ Thu Hà | 12h |
| 42 | 1.5.2.3.2 | Test chức năng tìm kiếm sản phẩm | 4h | 2018-03-15 13:00 | 2018-03-15 17:00 | 25, 41 | 0d | Nguyễn Thị Liên; Nguyễn Thu Trang; Đỗ Thu Hà | 12h |
| 43 | 1.5.2.3.3 | Test chức năng đặt hàng | 4h | 2018-03-16 08:00 | 2018-03-16 12:00 | 26, 42 | 0d | Nguyễn Thị Liên; Nguyễn Thu Trang; Đỗ Thu Hà | 12h |
| 44 | 1.5.2.3.4 | Test chức năng phân trang | 2h | 2018-03-16 13:00 | 2018-03-16 15:00 | 27, 43 | 0d | Nguyễn Thị Liên; Nguyễn Thu Trang; Đỗ Thu Hà | 6h |
| 45 | 1.5.2.3.5 | Test chức năng thêm sản phẩm vào giỏ hàng | 4h | 2018-03-16 15:00 | 2018-03-19 10:00 | 28, 44 | 0d | Nguyễn Thị Liên; Nguyễn Thu Trang; Đỗ Thu Hà | 12h |
| 46 | 1.5.2.3.6 | Test chức năng đăng nhập (client) | 2h | 2018-03-19 10:00 | 2018-03-19 12:00 | 29, 45 | 0d | Nguyễn Thị Liên; Nguyễn Thu Trang; Đỗ Thu Hà | 6h |
| 47 | 1.5.2.3.7 | Test chức năng đăng kí tài khoản | 2h | 2018-03-19 13:00 | 2018-03-19 15:00 | 30, 46 | 0d | Nguyễn Thị Liên; Nguyễn Thu Trang; Đỗ Thu Hà | 6h |
| 48 | 1.5.2.4 | **Admin** | 2.25d | 2018-03-19 15:00 | 2018-03-21 17:00 | 40 | 0d |  | 54h |
| 49 | 1.5.2.4.1 | Test chức năng quản lý đơn đặt hàng | 4h | 2018-03-19 15:00 | 2018-03-20 10:00 | 32 | 0d | Nguyễn Thị Liên; Nguyễn Thu Trang; Đỗ Thu Hà | 12h |
| 50 | 1.5.2.4.2 | Test chức năng quản lý danh mục hoa | 4h | 2018-03-20 10:00 | 2018-03-20 15:00 | 33, 49 | 0d | Nguyễn Thị Liên; Nguyễn Thu Trang; Đỗ Thu Hà | 12h |
| 51 | 1.5.2.4.3 | Test chức năng quản lý hoa | 4h | 2018-03-20 15:00 | 2018-03-21 10:00 | 34, 50 | 0d | Nguyễn Thị Liên; Nguyễn Thu Trang; Đỗ Thu Hà | 12h |
| 52 | 1.5.2.4.4 | Test chức năng đăng nhập (admin) | 2h | 2018-03-21 10:00 | 2018-03-21 12:00 | 35, 51 | 0d | Nguyễn Thị Liên; Nguyễn Thu Trang; Đỗ Thu Hà | 6h |
| 53 | 1.5.2.4.5 | Test chức năng quản lý tài khoản | 4h | 2018-03-21 13:00 | 2018-03-21 17:00 | 36, 52 | 0d | Nguyễn Thị Liên; Nguyễn Thu Trang; Đỗ Thu Hà | 12h |
| 54 | 1.6 | **Tích hợp hệ thống** | 2d | 2018-03-22 08:00 | 2018-03-23 17:00 | 21 | 0d |  | 16h |
| 55 | 1.6.1 | Tích hợp hệ thống | 8h | 2018-03-22 08:00 | 2018-03-22 17:00 | 53 | 0d | Đỗ Văn Tú | 8h |
| 56 | 1.6.2 | Test tích hợp hệ thống | 8h | 2018-03-23 08:00 | 2018-03-23 17:00 | 55 | 0d | Nguyễn Thị Liên | 8h |

| ID | WBS | Task | Duration | Start | Finish | Predecessors | Total slack | Resources | Work |
| --- | --- | --- | --- | --- | --- | --- | --- | --- | --- |
| 57 | 1.7 | **Xây dựng tài liệu** | 2d | 2018-03-26 08:00 | 2018-03-27 17:00 | 54 | 0d |  | 16h |
| 58 | 1.7.1 | Tài liệu mô tả sản phẩm | 4h | 2018-03-26 08:00 | 2018-03-26 12:00 | 56 | 0d | Tom Thomas | 4h |
| 59 | 1.7.2 | Xây dựng phương án triển khai, tài liệu hướng dẫn triển khai | 4h | 2018-03-26 13:00 | 2018-03-26 17:00 | 58 | 0d | Tom Thomas | 4h |
| 60 | 1.7.3 | Xây dựng tài liệu đào tạo | 4h | 2018-03-27 08:00 | 2018-03-27 12:00 | 59 | 0d | Tom Thomas | 4h |
| 61 | 1.7.4 | Xây dựng các tài liệu quảng bá sản phẩm khác | 4h | 2018-03-27 13:00 | 2018-03-27 17:00 | 60 | 0d | Tom Thomas | 4h |
| 62 | 1.8 | **Triển khai** | 7d | 2018-03-28 08:00 | 2018-04-05 17:00 | 57 | 0d |  | 56h |
| 63 | 1.8.1 | Triển khai cài đặt hệ thống | 8h | 2018-03-28 08:00 | 2018-03-28 17:00 | 61 | 0d | Tom Thomas | 8h |
| 64 | 1.8.2 | Chuyển đổi dữ liệu | 8h | 2018-03-29 08:00 | 2018-03-29 17:00 | 63 | 0d | Tom Thomas | 8h |
| 65 | 1.8.3 | Cấu hình hệ thống | 2d | 2018-03-30 08:00 | 2018-04-02 17:00 | 64 | 0d | Tom Thomas | 16h |
| 66 | 1.8.4 | Đào tạo | 2d | 2018-04-03 08:00 | 2018-04-04 17:00 | 65 | 0d | Tom Thomas | 16h |
| 67 | 1.8.5 | Chạy thử nghiệm | 8h | 2018-04-05 08:00 | 2018-04-05 17:00 | 66 | 0d | Tom Thomas | 8h |
